# Polaris DC-1 Baseline

Schedule from Primavera P6, 2026-03-02 to 2027-06-11, costs in EUR.
Must finish by 2027-06-11

## Resources

| Resource | Group | Rate |
| --- | --- | --- |
| General Labour | labor | 45 |
| Management | labor | 75 |
| Procurement | labor | 70 |
| Surveyor | labor | 55 |
| Design Team | labor | 75 |
| Earthworks | labor | 52 |
| Blasting | labor | 65 |
| RC Frame | labor | 55 |
| Piling | labor | 70 |
| Steel Erection | labor | 62 |
| External Works | labor | 48 |
| Waterproofing | labor | 48 |
| Mech Pipe | labor | 60 |
| ELV | labor | 58 |
| Mech HVAC | labor | 58 |
| Precast | labor | 50 |
| Electrical | labor | 62 |
| Mech | labor | 55 |
| Envelope | labor | 48 |
| Roofing | labor | 50 |
| Fit-Out | labor | 48 |
| Commissioning | labor | 65 |

## Schedule

| ID | Activity | Type | Duration | Start | Finish | Predecessors | Total float | Resources | Cost |
| --- | --- | --- | --- | --- | --- | --- | --- | --- | --- |
| 1 | PROJECT COMMENCEMENT | milestone | 0d | 2026-03-02 | 2026-03-02 |  | 0d |  |  |
| 10 | Mobilisation & Site Setup |  | 8d | 2026-03-02 | 2026-03-11 | 1 | 0d | General Labour [384 h] | 1,470,831 |
| 12 | Planning Conditions Discharge |  | 10d | 2026-03-02 | 2026-03-13 | 1 | 21d | Management [160 h] | 12,000 |
| 30 | LT-01 Advance Purchase — Transformer Order |  | 5d | 2026-03-02 | 2026-03-06 | 1 | 88d | Procurement [80 h] | 5,600 |
| 11 | Site Survey & Setting Out |  | 5d | 2026-03-12 | 2026-03-18 | 10 | 21d | Surveyor [120 h] | 6,600 |
| 13 | Finavia Crane Permits — Application |  | 5d | 2026-03-12 | 2026-03-18 | 10 | 0d | Management [40 h] | 3,000 |
| 20 | Architectural Design Development |  | 25d | 2026-03-16 | 2026-04-17 | 12 | 21d | Design Team [800 h] | 60,000 |
| 14 | Finavia Crane Permits — Clearance Period |  | 21d | 2026-03-19 | 2026-04-16 | 13 | 0d | Management [168 h] | 12,600 |
| 22 | MEP Design Development |  | 25d | 2026-03-23 | 2026-04-24 | 20 SS+5d | 83d | Design Team [1000 h] | 75,000 |
| 23 | Electrical & ELV Design |  | 20d | 2026-03-23 | 2026-04-17 | 20 SS+5d | 126d | Design Team [640 h] | 48,000 |
| 21 | Structural Design Development |  | 20d | 2026-03-30 | 2026-04-24 | 20 SS+10d | 21d | Design Team [640 h] | 48,000 |
| 24 | Civil & External Works Design |  | 15d | 2026-04-06 | 2026-04-24 | 21 SS+5d | 132d | Design Team [360 h] | 27,000 |
| 40 | Bulk Earthworks — Site Strip & Cut |  | 53d | 2026-04-17 | 2026-06-30 | 11, 14 | 0d | Earthworks [6784 h] | 834,595 |
| 35 | LT-05 UPS Procurement |  | 5d | 2026-04-20 | 2026-04-24 | 23 | 156d | Procurement [80 h] | 5,600 |
| 36 | LT-06 Busway Procurement |  | 5d | 2026-04-20 | 2026-04-24 | 23 | 126d | Procurement [80 h] | 5,600 |
| 25 | Design Gate Review — Engineer (14-day) |  | 14d | 2026-04-27 | 2026-05-14 | 20, 21, 22, 23, 24 | 132d | Management [112 h] | 8,400 |
| 33 | LT-04 Chiller & CRAH Procurement |  | 5d | 2026-04-27 | 2026-05-01 | 22 | 174d | Procurement [80 h] | 5,600 |
| 34 | LT-11 Structural Steel Procurement |  | 5d | 2026-04-27 | 2026-05-01 | 21 | 21d | Procurement [80 h] | 5,600 |
| 41 | Rock Excavation & Blasting |  | 31d | 2026-05-01 | 2026-06-12 | 40 SS+10d | 0d | Blasting [3968 h] | 696,761 |
| 31 | LT-02 MV Switchgear Procurement |  | 5d | 2026-05-04 | 2026-05-08 | 22 FS+5d | 83d | Procurement [80 h] | 5,600 |
| 32 | LT-03 Generator Procurement |  | 5d | 2026-05-04 | 2026-05-08 | 22 FS+5d | 131d | Procurement [80 h] | 5,600 |
| 43 | Substation & Gen Pad Foundations |  | 15d | 2026-06-08 | 2026-06-26 | 41 FS-5d | 87d | RC Frame [960 h] | 200,663 |
| 45 | Gatehouse & Compound Foundations |  | 8d | 2026-06-15 | 2026-06-24 | 41 | 226d | RC Frame [384 h] | 160,277 |
| 50 | DH1 — Rock-Socketed Bored Piles |  | 53d | 2026-06-15 | 2026-08-26 | 41 | 0d | Piling [5088 h] | 356,160 |
| 42 | Trench Excavation — Site Services |  | 11d | 2026-06-22 | 2026-07-06 | 41 FS+5d | 196d | Earthworks [704 h] | 75,848 |
| 103 | Gatehouse Construction |  | 20d | 2026-06-25 | 2026-07-22 | 45 | 226d | RC Frame [640 h] | 275,431 |
| 100 | Substation Building Construction |  | 30d | 2026-06-29 | 2026-08-07 | 43 | 148d | RC Frame [1440 h] | 803,479 |
| 101 | Gen Compound Civil & Enclosure |  | 25d | 2026-06-29 | 2026-07-31 | 43 | 206d | RC Frame [1200 h] | 553,611 |
| 44 | Cooling Spine Pipe Rack Fnds |  | 8d | 2026-06-29 | 2026-07-08 | 43 | 87d | RC Frame [384 h] | 160,277 |
| 51 | DH2 — Rock-Socketed Bored Piles |  | 53d | 2026-07-06 | 2026-09-16 | 50 SS+15d | 0d | Piling [5088 h] | 356,160 |
| 104 | Shared Infra — UG Services & Ducts |  | 15d | 2026-07-07 | 2026-07-27 | 42 | 196d | Earthworks [720 h] | 734,942 |
| 102 | Cooling Spine Structural Frame |  | 15d | 2026-07-09 | 2026-07-29 | 44 | 87d | Steel Erection [720 h] | 1,434,731 |
| 55 | DH2 Pile Caps & Ground Beams |  | 13d | 2026-07-13 | 2026-07-29 | 51 SS+5d | 0d | RC Frame [1664 h] | 157,759 |
| 52 | DH3 — Rock-Socketed Bored Piles |  | 53d | 2026-07-20 | 2026-09-30 | 51 SS+10d | 22d | Piling [5088 h] | 356,160 |
| 56 | DH3 Pile Caps & Ground Beams |  | 13d | 2026-07-27 | 2026-08-12 | 52 SS+5d | 27d | RC Frame [1664 h] | 157,759 |
| 200 | Access Roads & Parking Construction |  | 15d | 2026-07-28 | 2026-08-17 | 104 | 196d | External Works [1440 h] | 1,588,778 |
| 118 | Cooling Spine — Pipework & Distr. |  | 44d | 2026-07-30 | 2026-09-29 | 102 | 87d | Mech Pipe [4224 h] | 2,400,766 |
| 59 | DH2 Foundation Waterproofing |  | 11d | 2026-07-30 | 2026-08-13 | 55 | 0d | Waterproofing [352 h] | 39,929 |
| 53 | DH4 — Rock-Socketed Bored Piles |  | 53d | 2026-08-03 | 2026-10-14 | 52 SS+10d | 22d | Piling [5088 h] | 356,160 |
| 57 | DH4 Pile Caps & Ground Beams |  | 13d | 2026-08-10 | 2026-08-26 | 53 SS+5d | 22d | RC Frame [1664 h] | 157,759 |
| 60 | DH3 Foundation Waterproofing |  | 11d | 2026-08-10 | 2026-08-24 | 56 SS+10d | 27d | Waterproofing [352 h] | 39,929 |
| 63 | DH2 Ground Floor Slab |  | 22d | 2026-08-14 | 2026-09-14 | 59 | 0d | RC Frame [2816 h] | 589,519 |
| 201 | External Lighting & Security |  | 10d | 2026-08-18 | 2026-08-31 | 200 | 198d | ELV [320 h] | 523,917 |
| 202 | Perimeter Fencing & Gates |  | 10d | 2026-08-18 | 2026-08-31 | 200 | 198d | External Works [320 h] | 472,726 |
| 203 | Landscaping & Soft Works |  | 12d | 2026-08-18 | 2026-09-02 | 200 | 196d | External Works [384 h] | 207,703 |
| 61 | DH4 Foundation Waterproofing |  | 11d | 2026-08-24 | 2026-09-07 | 57 SS+10d | 22d | Waterproofing [352 h] | 39,929 |
| 54 | DH1 Pile Caps & Ground Beams |  | 13d | 2026-08-27 | 2026-09-14 | 50 | 5d | RC Frame [1664 h] | 157,759 |
| 64 | DH3 Ground Floor Slab |  | 22d | 2026-08-31 | 2026-09-29 | 60 SS+15d | 27d | RC Frame [2816 h] | 589,519 |
| 65 | DH4 Ground Floor Slab |  | 22d | 2026-09-14 | 2026-10-13 | 61 SS+15d | 22d | RC Frame [2816 h] | 589,519 |
| 58 | DH1 Foundation Waterproofing |  | 11d | 2026-09-15 | 2026-09-29 | 54 | 5d | Waterproofing [352 h] | 39,929 |
| 71 | DH2 — GF Steel Erection |  | 8d | 2026-09-24 | 2026-10-05 | 63 FS+7d | 0d | Steel Erection [1024 h] | 369,771 |
| 140 | DH1 — Chiller Installation & Piping |  | 10d | 2026-09-30 | 2026-10-13 | 118, 33 SS+105d | 167d | Mech HVAC [320 h] | 5,244,460 |
| 62 | DH1 Ground Floor Slab |  | 22d | 2026-09-30 | 2026-10-29 | 58 | 5d | RC Frame [2816 h] | 589,519 |
| 73 | DH2 — Upper Floor & Roof Steel |  | 40d | 2026-10-06 | 2026-11-30 | 71 | 0d | Steel Erection [6400 h] | 575,733 |
| 79 | DH2 — Precast Plank Floors |  | 20d | 2026-10-20 | 2026-11-16 | 73 SS+10d | 33d | Precast [1920 h] | 442,610 |
| 82 | Admin/NOC Ground Slab |  | 12d | 2026-11-04 | 2026-11-19 | 65 FS+15d | 53d | RC Frame [768 h] | 457,560 |
| 123 | Transformer & MV Switchgear Install |  | 5d | 2026-11-09 | 2026-11-13 | 100, 30 SS+175d, 31 SS+135d | 83d | Electrical [320 h] | 5,393,553 |
| 70 | DH1 — GF Steel Erection |  | 8d | 2026-11-10 | 2026-11-19 | 62 FS+7d, 25, 34 SS+125d | 5d | Steel Erection [1024 h] | 369,771 |
| 124 | Main LV Switchgear Installation |  | 3d | 2026-11-16 | 2026-11-18 | 123 | 83d | Electrical [96 h] | 247,318 |
| 125 | Generator & UPS Installation |  | 5d | 2026-11-16 | 2026-11-20 | 101, 32 SS+140d, 35 SS+125d | 131d | Mech [320 h] | 15,046,652 |
| 74 | DH3 — GF Steel Erection |  | 8d | 2026-11-17 | 2026-11-26 | 64 FS+7d, 73 FS-10d | 0d | Steel Erection [1024 h] | 369,771 |
| 91 | DH2 — Ext Wall Insul & Cladding |  | 28d | 2026-11-17 | 2026-12-24 | 79 | 33d | Envelope [2688 h] | 577,598 |
| 72 | DH1 — Upper Floor & Roof Steel |  | 40d | 2026-11-20 | 2027-01-14 | 70 | 5d | Steel Erection [6400 h] | 575,733 |
| 75 | DH4 — GF Steel Erection |  | 8d | 2026-11-24 | 2026-12-03 | 65 FS+7d, 74 FS-3d | 0d | Steel Erection [1024 h] | 369,771 |
| 95 | DH2 — Roof Waterproofing & Insul |  | 22d | 2026-11-24 | 2026-12-23 | 91 SS+5d | 33d | Roofing [1408 h] | 745,988 |
| 76 | DH3 — Upper Floor & Roof Steel |  | 40d | 2026-11-27 | 2027-01-21 | 74 | 5d | Steel Erection [6400 h] | 575,733 |
| 111 | DH2 — Cable Trays & Containment |  | 35d | 2026-12-01 | 2027-01-18 | 95 SS+5d | 50d | Electrical [4480 h] | 762,370 |
| 115 | DH2 — HVAC Ductwork & AHU Install |  | 35d | 2026-12-01 | 2027-01-18 | 95 SS+5d | 43d | Mech HVAC [4480 h] | 606,101 |
| 83 | Admin/NOC Steel Frame & Precast |  | 25d | 2026-12-01 | 2027-01-04 | 82 FS+7d | 53d | Steel Erection [1600 h] | 260,402 |
| 77 | DH4 — Upper Floor & Roof Steel |  | 40d | 2026-12-04 | 2027-01-28 | 75 | 0d | Steel Erection [6400 h] | 575,733 |

Notes:
- 10: Expenses: Mobilisation & Site Setup — Expense 1453551
- 40: Expenses: Bulk Earthworks — Site Strip & Cut — Expense 481827
- 41: Expenses: Rock Excavation & Blasting — Expense 438841
- 43: Expenses: Substation & Gen Pad Foundations — Expense 147863
- 45: Expenses: Gatehouse & Compound Foundations — Expense 139157
- 42: Expenses: Trench Excavation — Site Services — Expense 39240
- 103: Expenses: Gatehouse Construction — Expense 240231
- 100: Expenses: Substation Building Construction — Expense 724279
- 101: Expenses: Gen Compound Civil & Enclosure — Expense 487611
- 44: Expenses: Cooling Spine Pipe Rack Fnds — Expense 139157
- 104: Expenses: Shared Infra — UG Services & Ducts — Expense 697502
- 102: Expenses: Cooling Spine Structural Frame — Expense 1390091
- 55: Expenses: DH2 Pile Caps & Ground Beams — Expense 66239
- 56: Expenses: DH3 Pile Caps & Ground Beams — Expense 66239
- 200: Expenses: Access Roads & Parking Construction — Expense 1519658
- 118: Expenses: Cooling Spine — Pipework & Distr. — Expense 2147326
- 59: Expenses: DH2 Foundation Waterproofing — Expense 23033
- 57: Expenses: DH4 Pile Caps & Ground Beams — Expense 66239
- 60: Expenses: DH3 Foundation Waterproofing — Expense 23033
- 63: Expenses: DH2 Ground Floor Slab — Expense 434639
- 201: Expenses: External Lighting & Security — Expense 505357
- 202: Expenses: Perimeter Fencing & Gates — Expense 457366
- 203: Expenses: Landscaping & Soft Works — Expense 189271
- 61: Expenses: DH4 Foundation Waterproofing — Expense 23033
- 54: Expenses: DH1 Pile Caps & Ground Beams — Expense 66239
- 64: Expenses: DH3 Ground Floor Slab — Expense 434639
- 65: Expenses: DH4 Ground Floor Slab — Expense 434639
- 58: Expenses: DH1 Foundation Waterproofing — Expense 23033
- 71: Expenses: DH2 — GF Steel Erection — Expense 306283
- 140: Expenses: DH1 — Chiller Installation & Piping — Expense 5225900
- 62: Expenses: DH1 Ground Floor Slab — Expense 434639
- 73: Expenses: DH2 — Upper Floor & Roof Steel — Expense 178933
- 79: Expenses: DH2 — Precast Plank Floors — Expense 346610
- 82: Expenses: Admin/NOC Ground Slab — Expense 415320
- 123: Expenses: Transformer & MV Switchgear Install — Expense 5373713
- 70: Expenses: DH1 — GF Steel Erection — Expense 306283
- 124: Expenses: Main LV Switchgear Installation — Expense 241366
- 125: Expenses: Generator & UPS Installation — Expense 15029052
- 74: Expenses: DH3 — GF Steel Erection — Expense 306283
- 91: Expenses: DH2 — Ext Wall Insul & Cladding — Expense 448574
- 72: Expenses: DH1 — Upper Floor & Roof Steel — Expense 178933
- 75: Expenses: DH4 — GF Steel Erection — Expense 306283
- 95: Expenses: DH2 — Roof Waterproofing & Insul — Expense 675588
- 76: Expenses: DH3 — Upper Floor & Roof Steel — Expense 178933
- 111: Expenses: DH2 — Cable Trays & Containment — Expense 484610
- 115: Expenses: DH2 — HVAC Ductwork & AHU Install — Expense 346261
- 83: Expenses: Admin/NOC Steel Frame & Precast — Expense 161202
- 77: Expenses: DH4 — Upper Floor & Roof Steel — Expense 178933

| ID | Activity | Type | Duration | Start | Finish | Predecessors | Total float | Resources | Cost |
| --- | --- | --- | --- | --- | --- | --- | --- | --- | --- |
| 78 | DH1 — Precast Plank Floors |  | 20d | 2026-12-04 | 2026-12-31 | 72 SS+10d | 5d | Precast [1920 h] | 442,610 |
| 120 | DH2 — Riser Piping |  | 22d | 2026-12-08 | 2027-01-06 | 95 SS+10d, 118 FS-5d | 33d | Mech Pipe [2112 h] | 640,307 |
| 80 | DH3 — Precast Plank Floors |  | 20d | 2026-12-11 | 2027-01-07 | 76 SS+10d | 5d | Precast [1920 h] | 442,610 |
| 81 | DH4 — Precast Plank Floors |  | 20d | 2026-12-18 | 2027-01-14 | 77 SS+10d | 0d | Precast [1920 h] | 442,610 |
| 90 | DH1 — Ext Wall Insul & Cladding |  | 28d | 2027-01-01 | 2027-02-09 | 78 | 5d | Envelope [2688 h] | 577,598 |
| 105 | Admin/NOC Envelope |  | 20d | 2027-01-05 | 2027-02-01 | 83 | 53d | Envelope [960 h] | 293,449 |
| 92 | DH3 — Ext Wall Insul & Cladding |  | 28d | 2027-01-08 | 2027-02-16 | 80 | 5d | Envelope [2688 h] | 577,598 |
| 94 | DH1 — Roof Waterproofing & Insul |  | 22d | 2027-01-08 | 2027-02-08 | 90 SS+5d | 5d | Roofing [1408 h] | 745,988 |
| 131 | DH2 — CRAH Fan-Wall Installation |  | 33d | 2027-01-12 | 2027-02-25 | 115 FS-5d, 120 SS+5d | 43d | Mech HVAC [3168 h] | 560,304 |
| 142 | DH2 — Electrical Dist. Boards |  | 14d | 2027-01-12 | 2027-01-29 | 111 FS-5d | 50d | Electrical [1344 h] | 356,832 |
| 146 | DH2 — Busway & Power Feeders |  | 14d | 2027-01-12 | 2027-01-29 | 111 FS-5d | 50d | Electrical [1344 h] | 155,463 |
| 151 | DH2 — ELV/BMS/Fire Detection |  | 20d | 2027-01-12 | 2027-02-08 | 111 FS-5d | 71d | ELV [1920 h] | 526,579 |
| 161 | DH2 — Raised Access Flooring |  | 19d | 2027-01-12 | 2027-02-05 | 115 FS-5d | 84d | Fit-Out [1824 h] | 432,177 |
| 110 | DH1 — Cable Trays & Containment |  | 35d | 2027-01-15 | 2027-03-04 | 94 SS+5d, 25 | 12d | Electrical [4480 h] | 762,370 |
| 114 | DH1 — HVAC Ductwork & AHU Install |  | 35d | 2027-01-15 | 2027-03-04 | 94 SS+5d, 25 | 5d | Mech HVAC [4480 h] | 606,101 |
| 93 | DH4 — Ext Wall Insul & Cladding |  | 28d | 2027-01-15 | 2027-02-23 | 81 | 0d | Envelope [2688 h] | 577,598 |
| 96 | DH3 — Roof Waterproofing & Insul |  | 22d | 2027-01-15 | 2027-02-15 | 92 SS+5d | 5d | Roofing [1408 h] | 745,988 |
| 112 | DH3 — Cable Trays & Containment |  | 35d | 2027-01-22 | 2027-03-11 | 96 SS+5d | 12d | Electrical [4480 h] | 762,370 |
| 116 | DH3 — HVAC Ductwork & AHU Install |  | 35d | 2027-01-22 | 2027-03-11 | 96 SS+5d | 5d | Mech HVAC [4480 h] | 606,101 |
| 119 | DH1 — Riser Piping (Htg & Clg) |  | 22d | 2027-01-22 | 2027-02-22 | 94 SS+10d, 118 FS-5d | 25d | Mech Pipe [2112 h] | 640,307 |
| 97 | DH4 — Roof Waterproofing & Insul |  | 22d | 2027-01-22 | 2027-02-22 | 93 SS+5d | 0d | Roofing [1408 h] | 745,988 |
| 113 | DH4 — Cable Trays & Containment |  | 35d | 2027-01-29 | 2027-03-18 | 97 SS+5d | 7d | Electrical [4480 h] | 762,370 |
| 117 | DH4 — HVAC Ductwork & AHU Install |  | 35d | 2027-01-29 | 2027-03-18 | 97 SS+5d | 0d | Mech HVAC [4480 h] | 606,101 |
| 121 | DH3 — Riser Piping |  | 22d | 2027-01-29 | 2027-03-01 | 96 SS+10d, 120 SS+15d | 10d | Mech Pipe [2112 h] | 640,307 |
| 171 | DH2 — Electrical Testing & Dead Bus |  | 12d | 2027-02-01 | 2027-02-16 | 142, 146 | 50d | Commissioning [384 h] | 85,019 |
| 164 | Admin/NOC — Fit-Out |  | 25d | 2027-02-02 | 2027-03-08 | 105 | 53d | Fit-Out [3200 h] | 2,474,594 |
| 122 | DH4 — Riser Piping |  | 22d | 2027-02-19 | 2027-03-22 | 97 SS+10d, 121 SS+15d | 10d | Mech Pipe [2112 h] | 640,307 |
| 130 | DH1 — CRAH Fan-Wall Installation |  | 33d | 2027-02-26 | 2027-04-13 | 114 FS-5d, 119 SS+5d | 5d | Mech HVAC [3168 h] | 560,304 |
| 141 | DH1 — Electrical Dist. Boards |  | 14d | 2027-02-26 | 2027-03-17 | 110 FS-5d, 124 | 12d | Electrical [1344 h] | 356,832 |
| 145 | DH1 — Busway & Power Feeders |  | 14d | 2027-02-26 | 2027-03-17 | 110 FS-5d, 124, 36 SS+110d | 12d | Electrical [1344 h] | 155,463 |
| 150 | DH1 — ELV/BMS/Fire Detection |  | 20d | 2027-02-26 | 2027-03-25 | 110 FS-5d | 33d | ELV [1920 h] | 526,579 |
| 160 | DH1 — Raised Access Flooring |  | 19d | 2027-02-26 | 2027-03-24 | 114 FS-5d | 34d | Fit-Out [1824 h] | 432,177 |
| 176 | DH2 — HVAC Commissioning & Balancing |  | 15d | 2027-02-26 | 2027-03-18 | 131, 171 | 43d | Commissioning [720 h] | 33,944 |
| 132 | DH3 — CRAH Fan-Wall Installation |  | 33d | 2027-03-05 | 2027-04-20 | 116 FS-5d, 121 SS+5d | 5d | Mech HVAC [3168 h] | 560,304 |
| 143 | DH3 — Electrical Dist. Boards |  | 14d | 2027-03-05 | 2027-03-24 | 112 FS-5d | 12d | Electrical [1344 h] | 356,832 |
| 147 | DH3 — Busway & Power Feeders |  | 14d | 2027-03-05 | 2027-03-24 | 112 FS-5d | 12d | Electrical [1344 h] | 155,463 |
| 152 | DH3 — ELV/BMS/Fire Detection |  | 20d | 2027-03-05 | 2027-04-01 | 112 FS-5d | 33d | ELV [1920 h] | 526,579 |
| 162 | DH3 — Raised Access Flooring |  | 19d | 2027-03-05 | 2027-03-31 | 116 FS-5d | 46d | Fit-Out [1824 h] | 432,177 |
| 210 | Admin/NOC Commissioning Sign-off |  | 10d | 2027-03-09 | 2027-03-22 | 164 | 53d | Commissioning [240 h] | 35,000 |
| 133 | DH4 — CRAH Fan-Wall Installation |  | 33d | 2027-03-12 | 2027-04-27 | 117 FS-5d, 122 SS+5d | 0d | Mech HVAC [3168 h] | 560,304 |
| 144 | DH4 — Electrical Dist. Boards |  | 14d | 2027-03-12 | 2027-03-31 | 113 FS-5d | 7d | Electrical [1344 h] | 356,832 |
| 148 | DH4 — Busway & Power Feeders |  | 14d | 2027-03-12 | 2027-03-31 | 113 FS-5d | 7d | Electrical [1344 h] | 155,463 |
| 153 | DH4 — ELV/BMS/Fire Detection |  | 20d | 2027-03-12 | 2027-04-08 | 113 FS-5d | 28d | ELV [1920 h] | 526,579 |
| 163 | DH4 — Raised Access Flooring |  | 19d | 2027-03-12 | 2027-04-07 | 117 FS-5d | 41d | Fit-Out [1824 h] | 432,177 |
| 170 | DH1 — Electrical Testing & Dead Bus |  | 12d | 2027-03-18 | 2027-04-02 | 141, 145 | 12d | Commissioning [384 h] | 85,019 |
| 190 | DH2 — BMS/BAS Integ. Func. Test |  | 12d | 2027-03-19 | 2027-04-05 | 151, 176 | 43d | Commissioning [384 h] | 626,099 |
| 191 | DH2 — Fire Alarm Integ. Test |  | 7d | 2027-03-19 | 2027-03-29 | 151, 176 | 48d | Commissioning [168 h] | 13,666 |
| 172 | DH3 — Electrical Testing & Dead Bus |  | 12d | 2027-03-25 | 2027-04-09 | 143, 147 | 12d | Commissioning [384 h] | 85,019 |
| 173 | DH4 — Electrical Testing & Dead Bus |  | 12d | 2027-04-01 | 2027-04-16 | 144, 148 | 7d | Commissioning [384 h] | 85,019 |
| 182 | DH1 — Generator Load-Bank Test |  | 8d | 2027-04-05 | 2027-04-14 | 125, 170 | 36d | Commissioning [192 h] | 1,033,664 |
| 192 | Section 2 Completion — Readiness Review |  | 5d | 2027-04-06 | 2027-04-12 | 190, 191, 161 | 43d | Management [80 h] | 151,088 |
| 6 | SECTION 2 COMPLETION (DH2 + Plant) | milestone | 0d | 2027-04-13 | 2027-04-13 | 192 | 43d |  |  |
| 175 | DH1 — HVAC Commissioning & Balancing |  | 15d | 2027-04-14 | 2027-05-04 | 130, 170 | 5d | Commissioning [720 h] | 33,944 |
| 177 | DH3 — HVAC Commissioning & Balancing |  | 15d | 2027-04-21 | 2027-05-11 | 132, 172 | 5d | Commissioning [720 h] | 33,944 |
| 178 | DH4 — HVAC Commissioning & Balancing |  | 15d | 2027-04-28 | 2027-05-18 | 133, 173 | 0d | Commissioning [720 h] | 33,944 |
| 180 | DH1 — BMS/BAS Integ. Func. Test |  | 12d | 2027-05-05 | 2027-05-20 | 150, 175, 160 | 5d | Commissioning [384 h] | 626,099 |
| 181 | DH1 — Fire Alarm Integ. Test |  | 7d | 2027-05-05 | 2027-05-13 | 150, 175 | 15d | Commissioning [168 h] | 13,666 |
| 205 | District Heating Commissioning (72hr) |  | 5d | 2027-05-05 | 2027-05-11 | 175 | 17d | Commissioning [120 h] | 4,075,507 |
| 193 | DH3 — BMS/BAS Integ. Func. Test |  | 12d | 2027-05-12 | 2027-05-27 | 152, 177 | 5d | Commissioning [384 h] | 626,099 |
| 194 | DH3 — Fire Alarm Integ. Test |  | 7d | 2027-05-12 | 2027-05-20 | 152, 177 | 10d | Commissioning [168 h] | 13,666 |
| 196 | DH4 — BMS/BAS Integ. Func. Test |  | 12d | 2027-05-19 | 2027-06-03 | 153, 178 | 0d | Commissioning [384 h] | 626,099 |
| 197 | DH4 — Fire Alarm Integ. Test |  | 7d | 2027-05-19 | 2027-05-27 | 153, 178 | 5d | Commissioning [168 h] | 13,666 |
| 206 | Acoustic Testing & IEQ Validation |  | 5d | 2027-05-21 | 2027-05-27 | 180 | 5d | Commissioning [120 h] | 20,000 |
| 183 | DH1 — S1 Completion Readiness Review |  | 5d | 2027-05-28 | 2027-06-03 | 181, 182, 103, 140, 205, 206 | 5d | Management [80 h] | 151,088 |
| 195 | Section 3 Completion — Readiness Review |  | 5d | 2027-05-28 | 2027-06-03 | 193, 194, 162 | 5d | Management [80 h] | 151,088 |
| 211 | Section 4 — Final Snagging & Readiness |  | 5d | 2027-06-04 | 2027-06-10 | 196, 197, 210, 201, 202, 203, 163 | 0d | Management [80 h] | 151,088 |
| 5 | SECTION 1 COMPLETION (DH1 + Shared Infra) | milestone | 0d | 2027-06-04 | 2027-06-04 | 183 | 5d |  |  |
| 7 | SECTION 3 COMPLETION (DH3 + Plant) | milestone | 0d | 2027-06-04 | 2027-06-04 | 195 | 5d |  |  |
| 8 | PROJECT COMPLETION (S4: DH4 + Admin/NOC + External) | milestone | 0d | 2027-06-11 | 2027-06-11 | 211, 5 FF, 6 FF, 7 FF | 0d |  |  |

Notes:
- 78: Expenses: DH1 — Precast Plank Floors — Expense 346610
- 120: Expenses: DH2 — Riser Piping — Expense 513587
- 80: Expenses: DH3 — Precast Plank Floors — Expense 346610
- 81: Expenses: DH4 — Precast Plank Floors — Expense 346610
- 90: Expenses: DH1 — Ext Wall Insul & Cladding — Expense 448574
- 105: Expenses: Admin/NOC Envelope — Expense 247369
- 92: Expenses: DH3 — Ext Wall Insul & Cladding — Expense 448574
- 94: Expenses: DH1 — Roof Waterproofing & Insul — Expense 675588
- 131: Expenses: DH2 — CRAH Fan-Wall Installation — Expense 376560
- 142: Expenses: DH2 — Electrical Dist. Boards — Expense 273504
- 146: Expenses: DH2 — Busway & Power Feeders — Expense 72135
- 151: Expenses: DH2 — ELV/BMS/Fire Detection — Expense 415219
- 161: Expenses: DH2 — Raised Access Flooring — Expense 344625
- 110: Expenses: DH1 — Cable Trays & Containment — Expense 484610
- 114: Expenses: DH1 — HVAC Ductwork & AHU Install — Expense 346261
- 93: Expenses: DH4 — Ext Wall Insul & Cladding — Expense 448574
- 96: Expenses: DH3 — Roof Waterproofing & Insul — Expense 675588
- 112: Expenses: DH3 — Cable Trays & Containment — Expense 484610
- 116: Expenses: DH3 — HVAC Ductwork & AHU Install — Expense 346261
- 119: Expenses: DH1 — Riser Piping (Htg & Clg) — Expense 513587
- 97: Expenses: DH4 — Roof Waterproofing & Insul — Expense 675588
- 113: Expenses: DH4 — Cable Trays & Containment — Expense 484610
- 117: Expenses: DH4 — HVAC Ductwork & AHU Install — Expense 346261
- 121: Expenses: DH3 — Riser Piping — Expense 513587
- 171: Expenses: DH2 — Electrical Testing & Dead Bus — Expense 60059
- 164: Expenses: Admin/NOC — Fit-Out — Expense 2320994
- 122: Expenses: DH4 — Riser Piping — Expense 513587
- 130: Expenses: DH1 — CRAH Fan-Wall Installation — Expense 376560
- 141: Expenses: DH1 — Electrical Dist. Boards — Expense 273504
- 145: Expenses: DH1 — Busway & Power Feeders — Expense 72135
- 150: Expenses: DH1 — ELV/BMS/Fire Detection — Expense 415219
- 160: Expenses: DH1 — Raised Access Flooring — Expense 344625
- 176: Expenses: DH2 — HVAC Commissioning & Balancing — Expense -12856
- 132: Expenses: DH3 — CRAH Fan-Wall Installation — Expense 376560
- 143: Expenses: DH3 — Electrical Dist. Boards — Expense 273504
- 147: Expenses: DH3 — Busway & Power Feeders — Expense 72135
- 152: Expenses: DH3 — ELV/BMS/Fire Detection — Expense 415219
- 162: Expenses: DH3 — Raised Access Flooring — Expense 344625
- 210: Expenses: Admin/NOC Commissioning Sign-off — Expense 19400
- 133: Expenses: DH4 — CRAH Fan-Wall Installation — Expense 376560
- 144: Expenses: DH4 — Electrical Dist. Boards — Expense 273504
- 148: Expenses: DH4 — Busway & Power Feeders — Expense 72135
- 153: Expenses: DH4 — ELV/BMS/Fire Detection — Expense 415219
- 163: Expenses: DH4 — Raised Access Flooring — Expense 344625
- 170: Expenses: DH1 — Electrical Testing & Dead Bus — Expense 60059
- 190: Expenses: DH2 — BMS/BAS Integ. Func. Test — Expense 601139
- 191: Expenses: DH2 — Fire Alarm Integ. Test — Expense 2746
- 172: Expenses: DH3 — Electrical Testing & Dead Bus — Expense 60059
- 173: Expenses: DH4 — Electrical Testing & Dead Bus — Expense 60059
- 182: Expenses: DH1 — Generator Load-Bank Test — Expense 1021184
- 192: Expenses: Section 2 Completion — Readiness Review — Expense 145088
- 175: Expenses: DH1 — HVAC Commissioning & Balancing — Expense -12856
- 177: Expenses: DH3 — HVAC Commissioning & Balancing — Expense -12856
- 178: Expenses: DH4 — HVAC Commissioning & Balancing — Expense -12856
- 180: Expenses: DH1 — BMS/BAS Integ. Func. Test — Expense 601139
- 181: Expenses: DH1 — Fire Alarm Integ. Test — Expense 2746
- 205: Expenses: District Heating Commissioning (72hr) — Expense 4067707
- 193: Expenses: DH3 — BMS/BAS Integ. Func. Test — Expense 601139
- 194: Expenses: DH3 — Fire Alarm Integ. Test — Expense 2746
- 196: Expenses: DH4 — BMS/BAS Integ. Func. Test — Expense 601139
- 197: Expenses: DH4 — Fire Alarm Integ. Test — Expense 2746
- 206: Expenses: Acoustic Testing & IEQ Validation — Expense 12200
- 183: Expenses: DH1 — S1 Completion Readiness Review — Expense 145088
- 195: Expenses: Section 3 Completion — Readiness Review — Expense 145088
- 211: Expenses: Section 4 — Final Snagging & Readiness — Expense 145088
